# temp

Schedule from MS Project, 2024-02-21 to 2024-04-24, costs in ₫, A marks actual dates.

## Calendars

- Standard: Mon-Fri 08:00-12:00, 13:00-17:00; Sat-Sun off. Exceptions (off unless hours are given): 2024-04-18 (Giỗ Tỗ Hùng Vương).

## Resources

| Resource | Group | Rate |
| --- | --- | --- |
| Nguyễn Ngọc Cảnh Phong - Quản Lý | Quản Lý | 100000 |
| Trần Văn Huy - Lập Trình Viên 1 | Lập Trình | 40000 |
| Hoàng Thanh Tùng- Kiểm Thử Viên 1 | Kiểm Thử | 50000 |
| Trần Văn Huy - Kĩ Thuật Viên | Kĩ Thuật | 50000 |
| Đỗ Thị Diệu Ái - Phân Tích Viên 2 | Phân Tích | 55000 |
| Hoàng Thị Kiều Oanh - Thiết Kế Giao Diện 2 | Giao Diện | 40000 |
| Nguyễn Ngọc Cảnh Phong - Lập Trình Viên 2 | Lập Trình | 40000 |
| Hoàng Thanh Tùng - Phân Tích Viên 1 | Phân Tích | 55000 |
| Lê Thị Bảo Trâm - Thiết Kế Giao Diện 1 | Giao Diện | 40000 |
| Nguyễn Thị Minh Thư- Kiểm Thử Viên 2 | Kiểm Thử | 40000 |
| Nguyễn Ngọc Cảnh Phong - Thiết Kế Dữ Liệu 1 | Dữ Liệu | 70000 |
| Đỗ Thị Diệu Ái - Thiết Kế Dữ Liệu 2 | Dữ Liệu | 70000 |
| Hoàng Thị Kiều Oanh - Phân Tích Viên 3 | Phân Tích | 55000 |
| Nguyễn Thị Minh Thư - Thiết Kế Dữ Liệu 3 | Dữ Liệu | 70000 |

## Schedule

| ID | WBS | Task | Type | Duration | Start | Finish | Predecessors | Complete | Remaining | Total slack | Free slack | Constraint | Resources | Work | Actual work | Cost | Actual cost |
| --- | --- | --- | --- | --- | --- | --- | --- | --- | --- | --- | --- | --- | --- | --- | --- | --- | --- |
| 1 | 1 | **XÂY DỰNG HỆ THỐNG QUẢN LÝ KẾT NỐI VÀ CUNG CẤP GIA SƯ TP-HUẾ** |  | 45d | 2024-02-21 A | 2024-04-24 |  | 7% | 41.67d | 0d |  |  |  | 312h | 8h | 16,880,000 | 800,000 |
| 2 | 1.1 | Bản kế hoạch dự án |  | 1d | 2024-02-21 A | 2024-02-21 A |  | 100% |  |  |  | finish no earlier than 2024-02-21 | Nguyễn Ngọc Cảnh Phong - Quản Lý | 8h | 8h | 800,000 | 800,000 |
| 3 | 1.2 | Thời gian phê duyệt dự án |  | 1d | 2024-02-22 A | 2024-02-22 A | 2 | 100% |  |  |  | start no earlier than 2024-02-22 |  |  |  |  |  |
| 4 | 1.3 | **Phân Tích** |  | 9d | 2024-02-21 | 2024-03-05 |  |  |  | 9d |  |  |  | 136h |  | 7,840,000 |  |
| 5 | 1.3.1 | Thu Thập, Phân Tích Nhu Cầu Khách Hàng |  | 2d | 2024-02-21 | 2024-02-22 |  |  |  | 20d | 0d |  | Hoàng Thanh Tùng - Phân Tích Viên 1; Đỗ Thị Diệu Ái - Phân Tích Viên 2 | 32h |  | 1,760,000 |  |
| 6 | 1.3.2 | Lên Ý Tưởng, Phân Tích Thông Số Kĩ Thuật |  | 4d | 2024-02-23 | 2024-02-28 | 5 |  |  | 20d | 0d |  | Hoàng Thanh Tùng - Phân Tích Viên 1; Đỗ Thị Diệu Ái - Phân Tích Viên 2 | 64h |  | 3,520,000 |  |
| 7 | 1.3.3 | Lập Bảng Báo Cáo, Phản Hồi Khách Hàng |  | 2d | 2024-02-29 | 2024-03-01 | 6 |  |  | 20d | 0d |  | Hoàng Thanh Tùng - Phân Tích Viên 1; Đỗ Thị Diệu Ái - Phân Tích Viên 2 | 32h |  | 1,760,000 |  |
| 8 | 1.3.4 | Chờ Phê Duyệt Để Tiến Hành |  | 1d | 2024-03-04 | 2024-03-04 | 7 |  |  | 20d | 0d |  | Nguyễn Ngọc Cảnh Phong - Quản Lý | 8h |  | 800,000 |  |
| 9 | 1.3.5 | Hoàn Thành Phân Tích | milestone, manual | 0d | 2024-03-05 | 2024-03-05 | 8 |  |  |  |  |  | Đỗ Thị Diệu Ái - Phân Tích Viên 2 |  |  |  |  |
| 10 | 1.4 | **Thiết kế** |  | 8d | 2024-03-05 | 2024-03-15 |  |  |  | 8d |  |  |  | 88h |  | 4,000,000 |  |
| 11 | 1.4.1 | Thiết Kế Cấu Trúc Phần Mềm |  | 2d | 2024-03-05 | 2024-03-06 | 9 |  |  | 20d | 0d |  | Lê Thị Bảo Trâm - Thiết Kế Giao Diện 1 | 16h |  | 640,000 |  |
| 12 | 1.4.2 | Thiết Kế Giao Diện |  | 2d | 2024-03-07 | 2024-03-08 | 11 |  |  | 20d | 0d |  | Hoàng Thị Kiều Oanh - Thiết Kế Giao Diện 2 | 16h |  | 640,000 |  |
| 13 | 1.4.3 | Thiết Kế Cơ Sở Dữ Liệu |  | 2d | 2024-03-11 | 2024-03-12 | 12 |  |  | 20d | 0d |  | Lê Thị Bảo Trâm - Thiết Kế Giao Diện 1; Hoàng Thị Kiều Oanh - Thiết Kế Giao Diện 2 | 32h |  | 1,280,000 |  |
| 14 | 1.4.4 | Thiết Kế Thành Phần Hệ Thống |  | 1d | 2024-03-13 | 2024-03-13 | 13 |  |  | 20d | 0d |  | Lê Thị Bảo Trâm - Thiết Kế Giao Diện 1; Hoàng Thị Kiều Oanh - Thiết Kế Giao Diện 2 | 16h |  | 640,000 |  |
| 15 | 1.4.5 | Chờ Phê Duyệt Để Tiến Hành |  | 1d | 2024-03-14 | 2024-03-14 | 14 |  |  | 20d | 0d |  | Nguyễn Ngọc Cảnh Phong - Quản Lý | 8h |  | 800,000 |  |
| 16 | 1.4.6 | Hoàn Thành Thiết kế | milestone, manual | 0d | 2024-03-15 | 2024-03-15 | 15 |  |  |  |  |  |  |  |  |  |  |
| 17 | 1.5 | **Triển Khai** |  | 37d | 2024-02-21 | 2024-04-12 |  |  |  | 8d |  |  |  |  |  |  |  |
| 18 | 1.5.1 | **Triển Khai Logic Hệ Thông** |  | 0d | 2024-03-15 | 2024-03-15 | 16 |  |  | 20d | 0d |  | Trần Văn Huy - Lập Trình Viên 1; Nguyễn Ngọc Cảnh Phong - Lập Trình Viên 2 |  |  |  |  |
| 19 | 1.5.1.1 | **Phân tích thuật toán cho từng chức năng hệ thống** |  | 0d | 2024-03-15 | 2024-03-15 |  |  |  | 20d |  |  |  |  |  |  |  |
| 20 | 1.5.1.1.1 | Phân tích và hiểu rõ các yêu câu của từng chức năng | manual | 1d? | 2024-03-15 | 2024-03-15 |  |  |  |  |  |  |  |  |  |  |  |
| 21 | 1.5.1.1.2 | Xác định thuật toán và quy trình logic xử lý cho mỗi chức năng | manual | 1d? | 2024-03-15 | 2024-03-15 |  |  |  |  |  |  |  |  |  |  |  |
| 22 | 1.5.2 | **Xác định ngôn ngữ lập trình, công cụ phát triển và triển khai thuật toán** |  | 0d | 2024-02-21 | 2024-02-21 |  |  |  | 45d |  |  |  |  |  |  |  |
| 23 | 1.5.2.1 | Chọn ngôn ngữ lập trình, công cụ phát triển và thư viện | manual | 1d? | 2024-03-15 | 2024-03-15 |  |  |  |  |  |  |  |  |  |  |  |
| 24 | 1.5.2.2 | Triển khai xây dựng thuật toán cho các chức năng | manual | 1d? | 2024-02-21 | 2024-02-21 |  |  |  |  |  |  |  |  |  |  |  |
| 25 | 1.5.2.3 | Kiểm tra tính logic xử lý của từng chức năng | manual | 1d? | 2024-02-21 | 2024-02-21 |  |  |  |  |  |  |  |  |  |  |  |

| ID | WBS | Task | Type | Duration | Start | Finish | Predecessors | Total slack | Free slack | Resources |
| --- | --- | --- | --- | --- | --- | --- | --- | --- | --- | --- |
| 26 | 1.5.3 | **Liên kết các chức năng, logic hóa hệ thống** |  | 0d | 2024-02-21 | 2024-02-21 |  | 45d |  |  |
| 27 | 1.5.3.1 | Kết nối các chức năng, đảm bảo tính logic hệ thống | manual | 1d? | 2024-02-21 | 2024-02-21 |  |  |  |  |
| 28 | 1.5.3.2 | Kiểm tra tính logic, hoạt động của hệ thống và đảm bảo không có sự xung đột giữa các chức năng | manual | 1d? | 2024-02-21 | 2024-02-21 |  |  |  |  |
| 29 | 1.5.4 | **Kiểm tra và xác định tính đúng đắn của thuật toán và quy trình logic của hệ thống** |  | 0d | 2024-02-21 | 2024-02-21 |  | 45d |  |  |
| 30 | 1.5.4.1 | Thực hiện các bước kiểm tra thuật toán và quy trình logic hệ thống | manual | 1d? | 2024-02-21 | 2024-02-21 |  |  |  |  |
| 31 | 1.5.4.2 | Gỡ lỗi và sửa các lỗi phát sinh trong quá trình triển khai thuật toán | manual | 1d? | 2024-02-21 | 2024-02-21 |  |  |  |  |
| 32 | 1.5.5 | **Viết báo cáo thuật toán, logic hệ thống** |  | 0d | 2024-02-21 | 2024-02-21 |  | 45d |  |  |
| 33 | 1.5.5.1 | Lập báo cáo chi tiết về các thuật toán được dùng trong mỗi chức năng | manual | 1d? | 2024-02-21 | 2024-02-21 |  |  |  |  |
| 34 | 1.5.5.2 | Lập báo cáo cụ thể logic hoạt động của mỗi chức năng và nguyên lý hoạt động của các chức năng đó | manual | 1d? | 2024-02-21 | 2024-02-21 |  |  |  |  |
| 35 | 1.5.6 | **Phát Triển Các Thành Phần CSDL** |  | 0d | 2024-03-15 | 2024-03-15 | 18 | 20d | 0d | Trần Văn Huy - Lập Trình Viên 1; Nguyễn Ngọc Cảnh Phong - Lập Trình Viên 2 |
| 36 | 1.5.6.1 | **Thiết kế bảng, thành phần dữ liệu** |  | 0d | 2024-03-15 | 2024-03-15 |  | 20d |  |  |
| 37 | 1.5.6.1.1 | Cài đặt và sử dụng SQL Sever để thiết kế cơ sở dữ liệu | manual | 1d? | 2024-03-15 | 2024-03-15 |  |  |  |  |
| 38 | 1.5.6.1.2 | Xây dựng cấu trúc các bảng dữ liệu cần thiết dựa trên mô hình dữ liệu đã thiết kế | manual | 1d? | 2024-03-15 | 2024-03-15 |  |  |  |  |
| 39 | 1.5.6.1.3 | Xây dựng các liên kết, ràng buộc giữa các bảng, đảm bảo tính nhất quán dữ liệu | manual | 1d? | 2024-03-15 | 2024-03-15 |  |  |  |  |
| 40 | 1.5.6.2 | **Thiết kế chức năng** |  | 0d | 2024-03-15 | 2024-03-15 |  | 20d |  |  |
| 41 | 1.5.6.2.1 | Lập trình các hàm chức năng truy xuất dữ liệu bao gồm thêm, sửa, xóa và truy vấn(function)) | manual | 1d? | 2024-03-15 | 2024-03-15 |  |  |  |  |
| 42 | 1.5.6.2.2 | Lập trình các quy trình xử lý dữ liệu(procedure) | manual | 1d? | 2024-03-15 | 2024-03-15 |  |  |  |  |
| 43 | 1.5.6.2.3 | Lập trình các bẩy sự kiện(trigger) | manual | 1d? | 2024-03-15 | 2024-03-15 |  |  |  |  |
| 44 | 1.5.6.2.4 | Lập trình các giao tác đảm bảo tính nhất quán dữ liệu(transaction) | manual | 1d? | 2024-03-15 | 2024-03-15 |  |  |  |  |
| 45 | 1.5.6.3 | **Tối ưu hóa và đảm bảo hiệu suất** |  | 0d | 2024-03-15 | 2024-03-15 |  | 20d |  |  |
| 46 | 1.5.6.3.1 | Tối ưu hóa lại cấu trúc cơ sở dữ liệu để đảm bảo hiệu suất và khả năng mở rộng của hệ thống | manual | 1d? | 2024-03-15 | 2024-03-15 |  |  |  |  |
| 47 | 1.5.6.3.2 | Kiểm tra lại và đánh giá hiệu suất của các truy vấn và thao tác dữ liệu | manual | 1d? | 2024-03-15 | 2024-03-15 |  |  |  |  |
| 48 | 1.5.7 | **Viết báo cáo** |  | 0d | 2024-02-21 | 2024-02-21 |  | 45d |  |  |
| 49 | 1.5.7.1 | Lập báo cáo chi tiết các thành phần trong CSDL(Các bảng, thuộc tính, kiểu dữ liệu,...) | manual | 1d? | 2024-02-21 | 2024-02-21 |  |  |  |  |
| 50 | 1.5.7.2 | Viết hướng dẫn chi tiết sử dụng các hàm chức năng, quy trình, bẩy sự kiện và giao tác của CSDL | manual | 1d? | 2024-02-21 | 2024-02-21 |  |  |  |  |
| 51 | 1.5.7.3 | Đánh giá chi tiết hiệu suất hoạt động của các hàm chức năng, quy trình, bẩy sự kiện và giao tác | manual | 1d? | 2024-02-21 | 2024-02-21 |  |  |  |  |

| ID | WBS | Task | Type | Duration | Start | Finish | Predecessors | Total slack | Free slack | Resources |
| --- | --- | --- | --- | --- | --- | --- | --- | --- | --- | --- |
| 52 | 1.5.8 | **Lập Trình Hệ Thống** |  | 0d | 2024-03-15 | 2024-03-15 | 35 | 20d | 0d | Trần Văn Huy - Lập Trình Viên 1; Nguyễn Ngọc Cảnh Phong - Lập Trình Viên 2 |
| 53 | 1.5.8.1 | **Xây dựng giao diện người dùng(UI)** |  | 0d | 2024-03-15 | 2024-03-15 |  | 20d |  |  |
| 54 | 1.5.8.1.1 | Xây dựng giao diện người dùng dựa trên thiết kế giao diện đã được xác định trước đó | manual | 1d? | 2024-03-15 | 2024-03-15 |  |  |  |  |
| 55 | 1.5.8.1.2 | Sử dụng framework UI để phát triển giao diện người dùng tương tác | manual | 1d? | 2024-03-15 | 2024-03-15 |  |  |  |  |
| 56 | 1.5.8.2 | **Tích hợp các thành phần** |  | 0d | 2024-03-15 | 2024-03-15 |  | 20d |  |  |
| 57 | 1.5.8.2.1 | Tích hợp CSDL vào các chức năng logic hệ thống | manual | 1d? | 2024-03-15 | 2024-03-15 |  |  |  |  |
| 58 | 1.5.8.2.2 | Tích hợp giao diện vào các chức năng cụ thể để tạo ra ứng dụng hoàn chỉnh | manual | 1d? | 2024-03-15 | 2024-03-15 |  |  |  |  |
| 59 | 1.5.8.3 | **Kiểm tra và gỡ lỗi** |  | 0d | 2024-03-15 | 2024-03-15 |  | 20d |  |  |
| 60 | 1.5.8.3.1 | Kiểm tra đảm bảo các chức năng và giao diện người dùng hoạt động đúng đắn và không gặp lỗi | manual | 1d? | 2024-03-15 | 2024-03-15 |  |  |  |  |
| 61 | 1.5.8.3.2 | Sửa các lỗi phát sinh trong quá trình lập trình | manual | 1d? | 2024-03-15 | 2024-03-15 |  |  |  |  |
| 62 | 1.5.9 | **Đánh Giá Và Tối Ưu Mã Nguồn** |  | 0d | 2024-03-15 | 2024-03-15 | 52 | 20d |  | Trần Văn Huy - Lập Trình Viên 1; Nguyễn Ngọc Cảnh Phong - Lập Trình Viên 2 |
| 63 | 1.5.9.1 | **Kiểm tra mã nguồn** |  | 0d | 2024-03-15 | 2024-03-15 |  | 20d |  |  |
| 64 | 1.5.9.1.1 | Kiêm tra mã nguồn để phát hiện các lỗi cú pháp, cảnh báo tiềm ẩn và các vấn đề bảo mật | manual | 1d? | 2024-03-15 | 2024-03-15 |  |  |  |  |
| 65 | 1.5.9.1.2 | Kiểm tra tính nhất quán và tuân thủ các quy tắc lập trình | manual | 1d? | 2024-03-15 | 2024-03-15 |  |  |  |  |
| 66 | 1.5.9.2 | **Phân tích hiệu suất** |  | 0d | 2024-03-15 | 2024-03-15 |  | 20d |  |  |
| 67 | 1.5.9.2.1 | Đánh giá hiệu suất của mã nguồn bao gồm thời gian phản hồi, tải trọng, sử dụng tài nguyên | manual | 1d? | 2024-03-15 | 2024-03-15 |  |  |  |  |
| 68 | 1.5.9.2.2 | Xác định các vấn đề liên quan đến hiệu suất và điều chỉnh mã nguồn để cải thiện hiệu suất | manual | 1d? | 2024-03-15 | 2024-03-15 |  |  |  |  |
| 69 | 1.5.9.3 | **Tối ưu hóa mã nguồn** |  | 0d | 2024-03-15 | 2024-03-15 |  | 20d |  |  |
| 70 | 1.5.9.3.1 | Loại bỏ các mã không cần thiết hoặc mã lập lại | manual | 1d? | 2024-03-15 | 2024-03-15 |  |  |  |  |
| 71 | 1.5.9.3.2 | Sử dụng các cấu trúc dữ liệu và thuật toán hiệu quả để tối ưu hóa thời gian thực thi và tài nguyên sử dụng | manual | 1d? | 2024-03-15 | 2024-03-15 |  |  |  |  |
| 72 | 1.5.9.4 | **Kiểm tra tính bảo mật** |  | 0d | 2024-03-15 | 2024-03-15 |  | 20d |  |  |
| 73 | 1.5.9.4.1 | Đánh giá và kiểm tra tính bảo mật của mã nguồn | manual | 1d? | 2024-03-15 | 2024-03-15 |  |  |  |  |
| 74 | 1.5.9.4.2 | Mã hóa dữ liệu, kiểm tra nhập liệu và xác thực người dùng | manual | 1d? | 2024-03-15 | 2024-03-15 |  |  |  |  |
| 75 | 1.5.9.5 | **Viết báo cáo đánh giá hiệu suất hoạt động, tính bảo mật hệ thống và khả năng mở rộng mã nguồn** |  | 0d | 2024-03-15 | 2024-03-15 |  | 20d |  |  |
| 76 | 1.5.9.5.1 | Lập báo cáo đánh giá mã nguồn | manual | 1d? | 2024-03-15 | 2024-03-15 |  |  |  |  |
| 77 | 1.5.9.5.2 | Lập báo cáo đánh giá hiệu suất phần mềm | manual | 1d? | 2024-03-15 | 2024-03-15 |  |  |  |  |
| 78 | 1.5.9.5.3 | Lập báo cáo đánh giá mức độ an toàn hệ thống | manual | 1d? | 2024-03-15 | 2024-03-15 |  |  |  |  |

| ID | WBS | Task | Type | Duration | Start | Finish | Predecessors | Total slack | Resources | Work | Cost |
| --- | --- | --- | --- | --- | --- | --- | --- | --- | --- | --- | --- |
| 79 | 1.5.9.6 | **Viết bảng hướng dẫn sử dụng phần mềm** |  | 0d | 2024-03-15 | 2024-03-15 |  | 20d |  |  |  |
| 80 | 1.5.9.6.1 | Trình bày cách sử dụng từng tính năng | manual | 1d? | 2024-03-15 | 2024-03-15 |  |  |  |  |  |
| 81 | 1.5.9.6.2 | Tổng hợp các lưu ý khi sử dụng hệ thống | manual | 1d? | 2024-03-15 | 2024-03-15 |  |  |  |  |  |
| 82 | 1.5.10 | Hoàn Thành Lập Trình | milestone, manual | 0d | 2024-04-12 | 2024-04-12 | 62 |  |  |  |  |
| 83 | 1.5.11 | <New Task> | manual | 1d? | 2024-02-21 | 2024-02-21 |  |  |  |  |  |
| 84 | 1.6 | **Kiểm Thử** |  | 6d | 2024-04-12 | 2024-04-23 |  | 0d |  | 64h | 3,440,000 |
| 85 | 1.6.1 | Lập Bảng Kế Hoạch Kiểm Thử |  | 1d | 2024-04-12 | 2024-04-12 | 82 | 0d | Hoàng Thanh Tùng- Kiểm Thử Viên 1 | 8h | 400,000 |
| 86 | 1.6.2 | Viết Và Tiến Hành Các Ca Kiểm Thử |  | 1d | 2024-04-15 | 2024-04-15 | 85 | 0d | Hoàng Thanh Tùng- Kiểm Thử Viên 1 | 8h | 400,000 |
| 87 | 1.6.3 | Kiểm Thử Toàn Hệ Thống |  | 1d | 2024-04-16 | 2024-04-16 | 86 | 0d | Hoàng Thanh Tùng- Kiểm Thử Viên 1 | 8h | 400,000 |
| 88 | 1.6.4 | Xác Định Và Sữa Lỗi |  | 2d | 2024-04-17 | 2024-04-19 | 87 | 0d | Hoàng Thanh Tùng- Kiểm Thử Viên 1; Trần Văn Huy - Lập Trình Viên 1 | 32h | 1,440,000 |
| 89 | 1.6.5 | Đánh Giá Cuối Cùng |  | 1d | 2024-04-22 | 2024-04-22 | 88 | 0d | Nguyễn Ngọc Cảnh Phong - Quản Lý | 8h | 800,000 |
| 90 | 1.6.6 | Hoàn Thành Kiểm Thử | milestone, manual | 0d | 2024-04-23 | 2024-04-23 | 89 |  |  |  |  |
| 91 | 1.7 | **Bàn Giao** |  | 2d | 2024-04-23 | 2024-04-24 |  | 0d |  | 16h | 800,000 |
| 92 | 1.7.1 | Cài Đặt Phần Mềm |  | 1d | 2024-04-23 | 2024-04-23 | 90 | 0d | Trần Văn Huy - Kĩ Thuật Viên | 8h | 400,000 |
| 93 | 1.7.2 | Hướng Dẫn Phầm Mềm |  | 1d | 2024-04-24 | 2024-04-24 | 92 | 0d | Trần Văn Huy - Kĩ Thuật Viên | 8h | 400,000 |
